# Database project plan revised

Schedule from MS Project, 2023-12-21 to 2024-04-30, A marks actual dates.
Hanon Systems Inc

## Calendars

- Standard: Mon-Fri 08:00-12:00, 13:00-17:00; Sat-Sun off.

## Schedule

| ID | WBS | Task | Type | Duration | Start | Finish | Predecessors | Complete | Remaining | Total slack |
| --- | --- | --- | --- | --- | --- | --- | --- | --- | --- | --- |
| 1 | 1 | Project introduction to incoming student | manual | 1d | 2023-12-21 A | 2023-12-21 A |  | 100% |  |  |
| 2 | 2 | Explanation of goal and things acchieved | manual | 2d | 2024-01-02 A | 2024-01-03 A |  | 100% |  |  |
| 3 | 3 | Read documentation | manual | 1d | 2024-01-02 A | 2024-01-02 A |  | 100% |  |  |
| 4 | 4 | Set up web app files | manual | 1d | 2024-01-04 A | 2024-01-04 A | 2 | 100% |  |  |
| 5 | 5 | Set up connection to database and GitHub | manual | 1d | 2024-01-04 A | 2024-01-04 A | 2 | 100% |  |  |
| 7 | 6 | Code Web Pages | manual | 1d? | 2024-02-26 | 2024-02-26 |  |  |  |  |
| 8 | 7 | Web page type 1 | manual | 10d | 2024-01-15 A | 2024-01-26 A |  | 100% |  |  |
| 9 | 8 | Type 1 demo to team | manual | 1d | 2024-01-29 A | 2024-01-29 A | 8 | 100% |  |  |
| 10 | 9 | Type 1 demo to IT | manual | 1d | 2024-01-29 | 2024-01-29 | 8 |  |  |  |
| 12 | 10 | Program page |  | 2d | 2024-01-30 A | 2024-01-31 A | 9 | 100% |  |  |
| 13 | 11 | Product page |  | 2d | 2024-02-01 A | 2024-02-02 A | 12 | 100% |  |  |
| 15 | 12 | Tests page |  | 10d | 2024-02-03 A | 2024-02-16 | 13 | 90% | 1d | 0d |
| 16 | 13 | Tests page demo |  | 1d | 2024-02-19 | 2024-02-19 | 15 |  |  | 51d |
| 18 | 14 | Chamber Log page |  | 10d | 2024-02-05 A | 2024-02-21 | 15 | 70% | 3d | 0d |
| 19 | 15 | Chamber Log page demo |  | 1d | 2024-02-22 | 2024-02-22 | 18 |  |  | 48d |
| 21 | 16 | DUT history page |  | 10d | 2024-02-22 | 2024-03-06 | 18 |  |  | 0d |
| 22 | 17 | DUT history page demo |  | 1d | 2024-03-07 | 2024-03-07 | 21 |  |  | 38d |
| 24 | 18 | Program Information page |  | 10d | 2024-03-07 | 2024-03-20 | 21 |  |  | 0d |
| 25 | 19 | Program Information page demo |  | 1d | 2024-03-21 | 2024-03-21 | 24 |  |  | 28d |
| 27 | 20 | Testmap page |  | 1d | 2024-03-21 | 2024-03-21 | 24 |  |  | 0d |
| 28 | 21 | Lab page |  | 1d | 2024-03-22 | 2024-03-22 | 27 |  |  | 0d |
| 29 | 22 | Skill page |  | 1d | 2024-03-25 | 2024-03-25 | 28 |  |  | 0d |
| 30 | 23 | Technician page |  | 1d | 2024-03-26 | 2024-03-26 | 29 |  |  | 0d |
| 31 | 24 | Fluid page |  | 1d | 2024-03-27 | 2024-03-27 | 30 |  |  | 0d |
| 32 | 25 | DUT page |  | 1d | 2024-03-28 | 2024-03-28 | 31 |  |  | 0d |
| 33 | 26 | Harness page |  | 1d | 2024-03-29 | 2024-03-29 | 32 |  |  | 0d |
| 34 | 27 | DAR page |  | 1d | 2024-04-01 | 2024-04-01 | 33 |  |  | 0d |
| 35 | 28 | Chamber page |  | 1d | 2024-04-02 | 2024-04-02 | 34 |  |  | 0d |
| 36 | 29 | Cage page |  | 1d | 2024-04-03 | 2024-04-03 | 35 |  |  | 0d |
| 37 | 30 | Laptop page |  | 1d | 2024-04-04 | 2024-04-04 | 36 |  |  | 0d |
| 38 | 31 | Test type page |  | 1d | 2024-04-05 | 2024-04-05 | 37 |  |  | 0d |
| 39 | 32 | Program fluid page |  | 1d | 2024-04-08 | 2024-04-08 | 38 |  |  | 0d |
| 40 | 33 | Program DAR page |  | 1d | 2024-04-09 | 2024-04-09 | 39 |  |  | 0d |
| 41 | 34 | Program cage page |  | 1d | 2024-04-10 | 2024-04-10 | 40 |  |  | 0d |
| 42 | 35 | DAR laptop page |  | 1d | 2024-04-11 | 2024-04-11 | 41 |  |  | 0d |
| 43 | 36 | Test chamber page |  | 1d | 2024-04-12 | 2024-04-12 | 42 |  |  | 0d |
| 44 | 37 | Test-DUT page |  | 1d | 2024-04-15 | 2024-04-15 | 43 |  |  | 0d |
| 45 | 38 | Test-Harnesses page |  | 1d | 2024-04-16 | 2024-04-16 | 44 |  |  | 0d |
| 47 | 39 | Create Menu |  | 1d | 2024-04-17 | 2024-04-17 | 45 |  |  | 0d |
| 49 | 40 | Add User Types |  | 3d | 2024-04-18 | 2024-04-22 | 47 |  |  | 0d |
| 51 | 41 | Add Login |  | 3d | 2024-04-23 | 2024-04-25 | 49 |  |  | 0d |
| 53 | 42 | Deploy Azure Database |  | 3d | 2024-04-26 | 2024-04-30 | 51 |  |  | 0d |
| 55 | 43 | Deploy Web App |  | 3d | 2024-04-26 | 2024-04-30 | 51 |  |  | 0d |
